# Office Remodel 11-1

How a schedule from MS Project changed from version to version. A marks actual dates.

## Version 1 (saved 2023-07-20, file Office Remodel Actuals.mpp)

| ID | WBS | Task | Duration | Start | Finish | Predecessors | Complete | Total float |
| --- | --- | --- | --- | --- | --- | --- | --- | --- |
| 1 | 1 | **Prep** | 0.5d | 2019-01-28 A | 2019-01-28 A |  | 100% |  |
| 2 |  | Remove existing furniture | 0.5d | 2019-01-28 A | 2019-01-28 A |  | 100% |  |
| 3 |  | Remove existing appliances | 0.5d | 2019-01-28 A | 2019-01-28 A |  | 100% |  |
| 4 | 2 | **Demolition** | 5d | 2019-01-28 A | 2019-02-04 A |  | 100% |  |
| 5 |  | Remove existing ceiling | 1d | 2019-01-28 A | 2019-01-29 A | 2, 3 | 100% |  |
| 6 |  | Tear out inside dividing walls | 2d | 2019-01-29 A | 2019-01-31 A | 5 | 100% |  |
| 7 |  | Remove drywall from main walls | 2d | 2019-01-31 A | 2019-02-04 A | 6 | 100% |  |
| 8 | 3 | **Construction** | 18.5d | 2019-02-04 A | 2019-02-28 |  | 36% | -4d |
| 9 |  | Install interior stud walls | 3d | 2019-02-04 A | 2019-02-07 A | 7 | 100% |  |
| 10 |  | Re-run electrical in all stud walls | 1d | 2019-02-07 A | 2019-02-18 A | 9 | 100% |  |
| 11 |  | Re-run plumbing for sink and icemaker | 1d | 2019-02-07 A | 2019-02-18 A | 9 | 100% |  |
| 12 |  | Install drywall | 5d | 2019-02-18 | 2019-02-23 | 10, 11 |  | -4d |
| 13 |  | Install ceiling grid | 3d | 2019-02-25 | 2019-02-27 | 12 |  | -4d |
| 14 |  | Install ceiling tile | 1d | 2019-02-28 | 2019-02-28 | 13 |  | -4d |
| 15 | 4 | **Finishing Work** | 13.5d | 2019-03-01 | 2019-03-20 |  |  | 0d |
| 16 |  | Paint walls and woodwork | 8d | 2019-03-01 | 2019-03-12 | 14 |  | 0d |
| 17 |  | Install new floor tile | 3d | 2019-03-13 | 2019-03-15 | 16 |  | 0d |
| 18 |  | Re-install appliances | 1d | 2019-03-18 | 2019-03-18 | 17 |  | 0d |
| 19 |  | Final cleaning | 1d | 2019-03-19 | 2019-03-19 | 18 |  | 0d |
| 20 |  | Re-install furniture | 0.5d | 2019-03-20 | 2019-03-20 | 19 |  | 0d |

## Version 2 (saved 2023-07-20, file Office Remodel Painting Adjusted.mpp)

Last finish 2019-03-20 → 2019-03-21 (+1d). Complete tasks 8 → 11.

Changed:

| ID | Task | Start | Finish | Duration | Complete | Total float | Other |
| --- | --- | --- | --- | --- | --- | --- | --- |
| 8 | **Construction** |  | 2019-02-28 → 2019-03-01 A (+1d) | 18.5d → 19.5d | 36% → 100% | -4d → none |  |
| 12 | Install drywall | 2019-02-18 → 2019-02-17 A (-1d) | 2019-02-23 A |  | 0% → 100% | -4d → none | constraint none → start no earlier than 2019-02-15 |
| 13 | Install ceiling grid | 2019-02-25 A | 2019-02-27 → 2019-02-28 A (+1d) | 3d → 4d | 0% → 100% | -4d → none |  |
| 14 | Install ceiling tile | 2019-02-28 → 2019-03-01 A (+1d) | 2019-02-28 → 2019-03-01 A (+1d) |  | 0% → 100% | -4d → none |  |
| 15 | **Finishing Work** | 2019-03-01 → 2019-03-04 (+3d) | 2019-03-20 → 2019-03-21 (+1d) |  |  | 0d → -2.5d |  |
| 16 | Paint walls and woodwork | 2019-03-01 → 2019-03-04 (+3d) | 2019-03-12 → 2019-03-13 (+1d) |  |  |  |  |
| 17 | Install new floor tile | 2019-03-13 → 2019-03-14 (+1d) | 2019-03-15 → 2019-03-18 (+3d) |  |  |  |  |
| 18 | Re-install appliances | 2019-03-18 → 2019-03-19 (+1d) | 2019-03-18 → 2019-03-19 (+1d) |  |  |  |  |
| 19 | Final cleaning | 2019-03-19 → 2019-03-20 (+1d) | 2019-03-19 → 2019-03-20 (+1d) |  |  |  |  |
| 20 | Re-install furniture | 2019-03-20 → 2019-03-21 (+1d) | 2019-03-20 → 2019-03-21 (+1d) |  |  | 0d → -2.5d |  |
